# elaboration_project_plan

Schedule from MS Project, 2006-11-01 to 2007-04-17.
Duke University

## Calendars

- Standard: Mon-Fri 08:00-12:00, 13:00-17:00; Sat-Sun off.

## Resources

| Resource |
| --- |
| Patrick |
| Ram |
| Elaborators |
| PriyatamElaborators |
| Development team |
| Pri |
| Priyatam |
| Ramakrishna |
| Kruttik |
| Manav |
| Developers |
| Development teatm |
| BAH |
| Adopters |
| Pryatam |

## Schedule

| ID | WBS | Task | Type | Duration | Start | Finish | Predecessors | Total slack | Free slack | Constraint |
| --- | --- | --- | --- | --- | --- | --- | --- | --- | --- | --- |
| 1 | 1 | **Template iteration (eligibility, study personnel, multi-site study)** |  | 34d | 2007-03-01 | 2007-04-17 |  | 0d |  |  |
| 2 | 1.1 | Iteration start | milestone | 0d | 2007-03-01 | 2007-03-01 |  | 0d |  | start no earlier than 2007-03-01 |
| 3 | 1.2 | **Project Management** |  | 30d | 2007-03-01 | 2007-04-11 | 2 | 4d |  |  |
| 4 | 1.2.1 | **Draft project plan (task 1.1)** |  | 30d | 2007-03-01 | 2007-04-11 |  | 4d |  |  |
| 5 | 1.2.1.1 | Developer draft |  | 5d | 2007-03-01 | 2007-03-07 |  | 4d | 0d |  |
| 6 | 1.2.1.2 | BAH review |  | 5d | 2007-03-08 | 2007-03-14 | 5 | 4d | 0d |  |
| 7 | 1.2.1.3 | Developer update |  | 5d | 2007-03-15 | 2007-03-21 | 6 | 4d | 0d |  |
| 8 | 1.2.1.4 | Adopter review |  | 3d | 2007-03-22 | 2007-03-26 | 7 | 4d | 0d |  |
| 9 | 1.2.1.5 | Developer update |  | 2d | 2007-03-27 | 2007-03-28 | 8 | 4d | 0d |  |
| 10 | 1.2.1.6 | Deliver project plan to BAH (task 1.1) | milestone | 0d | 2007-03-28 | 2007-03-28 | 9 | 4d | 0d |  |
| 11 | 1.2.1.7 | BAH review project plan (task 1.1) |  | 10d | 2007-03-29 | 2007-04-11 | 10 | 4d |  |  |
| 12 | 1.2.2 | **Update risk matrix (task 1.3.1)** |  | 20d | 2007-03-01 | 2007-03-28 |  | 4d |  |  |
| 13 | 1.2.2.1 | Update risk matrix for week 1 |  | 5d | 2007-03-01 | 2007-03-07 |  | 4d | 0d |  |
| 14 | 1.2.2.2 | Update risk matrix for week 2 |  | 5d | 2007-03-08 | 2007-03-14 | 13 | 4d | 0d |  |
| 15 | 1.2.2.3 | Deliver risk matrix to BAH (task 1.3.1) | milestone | 0d | 2007-03-14 | 2007-03-14 | 14 | 4d | 0d |  |
| 16 | 1.2.2.4 | BAH review risk matrix (task 1.3.1) |  | 10d | 2007-03-15 | 2007-03-28 | 15 | 14d |  |  |
| 17 | 1.2.3 | **Monthly report (task 1.3.1)** |  | 20d | 2007-03-15 | 2007-04-11 | 15 | 4d |  |  |
| 18 | 1.2.3.1 | Update risk matrix for week 3 |  | 5d | 2007-03-15 | 2007-03-21 |  | 4d | 0d |  |
| 19 | 1.2.3.2 | Update risk matrix for week 4 |  | 5d | 2007-03-22 | 2007-03-28 | 18 | 4d | 0d |  |
| 20 | 1.2.3.3 | Deliver monthly report and risk matrix to BAH (task 1.3.1) | milestone | 0d | 2007-03-28 | 2007-03-28 | 19 | 4d | 0d |  |
| 21 | 1.2.3.4 | BAH review monthly report and risk matrix (task 1.3.1) |  | 10d | 2007-03-29 | 2007-04-11 | 20 | 4d |  |  |
| 22 | 1.3 | **Requirements and use cases** |  | 30d | 2007-03-01 | 2007-04-11 | 2 | 0d |  |  |
| 23 | 1.3.1 | **Create level 1 use cases and requirements** |  | 2d | 2007-03-01 | 2007-03-02 |  | 0d |  |  |
| 24 | 1.3.1.1 | Use case document (task 3.1.1) |  | 1d | 2007-03-01 | 2007-03-01 |  | 0d |  |  |
| 25 | 1.3.1.2 | Requirements document (3.2.1) |  | 1d | 2007-03-02 | 2007-03-02 | 24 | 0d |  |  |

| ID | WBS | Task | Duration | Start | Finish | Predecessors | Total slack | Free slack |
| --- | --- | --- | --- | --- | --- | --- | --- | --- |
| 26 | 1.3.2 | **Update use case document (task 3.1.1, task 5.2.1)** | 9d | 2007-03-05 | 2007-03-15 | 23 | 4d | 0d |
| 27 | 1.3.2.1 | **Update eligibility use cases** | 9d | 2007-03-05 | 2007-03-15 |  | 4d |  |
| 28 | 1.3.2.1.1 | Developer update | 2d | 2007-03-05 | 2007-03-06 |  | 4d | 0d |
| 29 | 1.3.2.1.2 | Adopter review | 5d | 2007-03-07 | 2007-03-13 | 28 | 4d | 0d |
| 30 | 1.3.2.1.3 | Developer update | 1d | 2007-03-14 | 2007-03-14 | 29 | 4d | 0d |
| 31 | 1.3.2.1.4 | Adopter sign-off | 1d | 2007-03-15 | 2007-03-15 | 30 | 4d |  |
| 32 | 1.3.2.2 | **Update study personel use cases** | 9d | 2007-03-05 | 2007-03-15 |  | 4d |  |
| 33 | 1.3.2.2.1 | Developer update | 2d | 2007-03-05 | 2007-03-06 |  | 4d | 0d |
| 34 | 1.3.2.2.2 | Adopter review | 5d | 2007-03-07 | 2007-03-13 | 33 | 4d | 0d |
| 35 | 1.3.2.2.3 | Developer update | 1d | 2007-03-14 | 2007-03-14 | 34 | 4d | 0d |
| 36 | 1.3.2.2.4 | Adopter sign-off | 1d | 2007-03-15 | 2007-03-15 | 35 | 4d |  |
| 37 | 1.3.2.3 | **Update multi-site trial use cases** | 9d | 2007-03-05 | 2007-03-15 |  | 4d |  |
| 38 | 1.3.2.3.1 | Developer update | 2d | 2007-03-05 | 2007-03-06 |  | 4d | 0d |
| 39 | 1.3.2.3.2 | Adopter review | 5d | 2007-03-07 | 2007-03-13 | 38 | 4d | 0d |
| 40 | 1.3.2.3.3 | Developer update | 1d | 2007-03-14 | 2007-03-14 | 39 | 4d | 0d |
| 41 | 1.3.2.3.4 | Adopter sign-off | 1d | 2007-03-15 | 2007-03-15 | 40 | 4d |  |
| 42 | 1.3.3 | **Update requirements document (task 3.2.1, task 5.3.1)** | 9d | 2007-03-16 | 2007-03-28 | 26 | 4d | 0d |
| 43 | 1.3.3.1 | **Update eligibility requirements** | 9d | 2007-03-16 | 2007-03-28 |  | 4d |  |
| 44 | 1.3.3.1.1 | Developer update | 2d | 2007-03-16 | 2007-03-19 |  | 4d | 0d |
| 45 | 1.3.3.1.2 | Adopter review | 5d | 2007-03-20 | 2007-03-26 | 44 | 4d | 0d |
| 46 | 1.3.3.1.3 | Developer update | 1d | 2007-03-27 | 2007-03-27 | 45 | 4d | 0d |
| 47 | 1.3.3.1.4 | Adopter sign-off | 1d | 2007-03-28 | 2007-03-28 | 46 | 4d |  |
| 48 | 1.3.3.2 | **Update study personel requirements** | 9d | 2007-03-16 | 2007-03-28 |  | 4d |  |
| 49 | 1.3.3.2.1 | Developer update | 2d | 2007-03-16 | 2007-03-19 |  | 4d | 0d |
| 50 | 1.3.3.2.2 | Adopter review | 5d | 2007-03-20 | 2007-03-26 | 49 | 4d | 0d |
| 51 | 1.3.3.2.3 | Developer update | 1d | 2007-03-27 | 2007-03-27 | 50 | 4d | 0d |
| 52 | 1.3.3.2.4 | Adopter sign-off | 1d | 2007-03-28 | 2007-03-28 | 51 | 4d |  |

| ID | WBS | Task | Type | Duration | Start | Finish | Predecessors | Total slack | Free slack |
| --- | --- | --- | --- | --- | --- | --- | --- | --- | --- |
| 53 | 1.3.3.3 | **Update multi-site trial requirements** |  | 9d | 2007-03-16 | 2007-03-28 |  | 4d |  |
| 54 | 1.3.3.3.1 | Developer update |  | 2d | 2007-03-16 | 2007-03-19 |  | 4d | 0d |
| 55 | 1.3.3.3.2 | Adopter review |  | 5d | 2007-03-20 | 2007-03-26 | 54 | 4d | 0d |
| 56 | 1.3.3.3.3 | Developer update |  | 1d | 2007-03-27 | 2007-03-27 | 55 | 4d | 0d |
| 57 | 1.3.3.3.4 | Adopter sign-off |  | 1d | 2007-03-28 | 2007-03-28 | 56 | 4d |  |
| 58 | 1.3.4 | Developer deliver use case document to BAH (task 3.1.1, task 5.2.1) | milestone | 0d | 2007-03-28 | 2007-03-28 | 42 | 4d | 0d |
| 59 | 1.3.5 | BAH review use case document (task 3.1.1, task 5.2.1) |  | 10d | 2007-03-29 | 2007-04-11 | 58 | 4d |  |
| 60 | 1.3.6 | Developer deliver requirements document to BAH (task 3.2.1, task 5.3.1) | milestone | 0d | 2007-03-28 | 2007-03-28 | 42 | 4d | 0d |
| 61 | 1.3.7 | BAH review requirements document (task 3.2.1, task 5.3.1) |  | 10d | 2007-03-29 | 2007-04-11 | 60 | 4d |  |
| 62 | 1.4 | **Analysis and Design** |  | 29d | 2007-03-05 | 2007-04-12 | 23 | 0d |  |
| 63 | 1.4.1 | **Perform level 1 design** |  | 2d | 2007-03-05 | 2007-03-06 |  | 0d |  |
| 64 | 1.4.1.1 | Cursory BRIDG harmonization |  | 1d | 2007-03-05 | 2007-03-05 |  | 0d |  |
| 65 | 1.4.1.2 | Update implementation model |  | 1d | 2007-03-06 | 2007-03-06 | 64 | 0d |  |
| 66 | 1.4.1.3 | Cursory system design |  | 2d | 2007-03-05 | 2007-03-06 |  | 0d |  |
| 67 | 1.4.2 | **Modeling (task 3.3.1)** |  | 27d | 2007-03-07 | 2007-04-12 | 63 | 3d |  |
| 68 | 1.4.2.1 | **Update model** |  | 6d | 2007-03-07 | 2007-03-14 |  | 3d | 0d |
| 69 | 1.4.2.1.1 | **BRIDG harmonization** |  | 3d | 2007-03-07 | 2007-03-09 | 63 | 3d | 0d |
| 70 | 1.4.2.1.1.1 | Harmonize Study model |  | 3d | 2007-03-07 | 2007-03-09 |  | 3d |  |
| 71 | 1.4.2.1.1.2 | Harmonize Personnel model |  | 3d | 2007-03-07 | 2007-03-09 |  | 3d |  |
| 72 | 1.4.2.1.1.3 | Harmonize Multi-site Study model |  | 3d | 2007-03-07 | 2007-03-09 |  | 3d |  |
| 73 | 1.4.2.1.2 | **Model implementation** |  | 3d | 2007-03-12 | 2007-03-14 | 69 | 3d |  |
| 74 | 1.4.2.1.2.1 | Implement Study model |  | 3d | 2007-03-12 | 2007-03-14 |  | 3d |  |
| 75 | 1.4.2.1.2.2 | Implement Personnel model |  | 3d | 2007-03-12 | 2007-03-14 |  | 3d |  |
| 76 | 1.4.2.1.2.3 | Implement Multi-site Study model |  | 3d | 2007-03-12 | 2007-03-14 |  | 3d |  |
| 77 | 1.4.2.2 | Adopter review |  | 5d | 2007-03-15 | 2007-03-21 | 68 | 3d | 0d |

| ID | WBS | Task | Type | Duration | Start | Finish | Predecessors | Total slack | Free slack |
| --- | --- | --- | --- | --- | --- | --- | --- | --- | --- |
| 78 | 1.4.2.3 | **Update model** |  | 6d | 2007-03-22 | 2007-03-29 | 77 | 3d | 0d |
| 79 | 1.4.2.3.1 | **BRIDG harmonization** |  | 3d | 2007-03-22 | 2007-03-26 | 77 | 3d | 0d |
| 80 | 1.4.2.3.1.1 | Harmonize Study model |  | 3d | 2007-03-22 | 2007-03-26 |  | 3d |  |
| 81 | 1.4.2.3.1.2 | Harmonize Personnel model |  | 3d | 2007-03-22 | 2007-03-26 |  | 3d |  |
| 82 | 1.4.2.3.1.3 | Harmonize Multi-site Study model |  | 3d | 2007-03-22 | 2007-03-26 |  | 3d |  |
| 83 | 1.4.2.3.2 | **Model implementation** |  | 3d | 2007-03-27 | 2007-03-29 | 79 | 3d |  |
| 84 | 1.4.2.3.2.1 | Implement Study model |  | 3d | 2007-03-27 | 2007-03-29 |  | 3d |  |
| 85 | 1.4.2.3.2.2 | Implement Personnel model |  | 3d | 2007-03-27 | 2007-03-29 |  | 3d |  |
| 86 | 1.4.2.3.2.3 | Implement Multi-site Study model |  | 3d | 2007-03-27 | 2007-03-29 |  | 3d |  |
| 87 | 1.4.2.4 | Developer deliver UML to BAH (task 3.3.1) | milestone | 0d | 2007-03-29 | 2007-03-29 | 78 | 3d | 0d |
| 88 | 1.4.2.5 | BAH review of UML (task 3.3.1) |  | 10d | 2007-03-30 | 2007-04-12 | 87 | 3d |  |
| 89 | 1.4.3 | **System design (task 3.4.1)** |  | 25d | 2007-03-07 | 2007-04-10 | 63 | 5d |  |
| 90 | 1.4.3.1 | **Design eligibility** |  | 15d | 2007-03-07 | 2007-03-27 |  | 5d | 0d |
| 91 | 1.4.3.1.1 | Draft UML |  | 5d | 2007-03-07 | 2007-03-13 |  | 5d | 0d |
| 92 | 1.4.3.1.2 | Team review |  | 5d | 2007-03-14 | 2007-03-20 | 91 | 5d | 0d |
| 93 | 1.4.3.1.3 | Update design document |  | 5d | 2007-03-21 | 2007-03-27 | 92 | 5d |  |
| 94 | 1.4.3.2 | **Design personnel** |  | 15d | 2007-03-07 | 2007-03-27 |  | 5d | 0d |
| 95 | 1.4.3.2.1 | Draft UML |  | 5d | 2007-03-07 | 2007-03-13 |  | 5d | 0d |
| 96 | 1.4.3.2.2 | Team review |  | 5d | 2007-03-14 | 2007-03-20 | 95 | 5d | 0d |
| 97 | 1.4.3.2.3 | Update design document |  | 5d | 2007-03-21 | 2007-03-27 | 96 | 5d |  |
| 98 | 1.4.3.3 | **Design multi-site study** |  | 15d | 2007-03-07 | 2007-03-27 |  | 5d | 0d |
| 99 | 1.4.3.3.1 | Draft UML |  | 5d | 2007-03-07 | 2007-03-13 |  | 5d | 0d |
| 100 | 1.4.3.3.2 | Team review |  | 5d | 2007-03-14 | 2007-03-20 | 99 | 5d | 0d |
| 101 | 1.4.3.3.3 | Update design document |  | 5d | 2007-03-21 | 2007-03-27 | 100 | 5d |  |
| 102 | 1.4.3.4 | Deliver design doc to BAH (task 3.4.1) | milestone | 0d | 2007-03-27 | 2007-03-27 | 90, 94, 98 | 5d | 0d |
| 103 | 1.4.3.5 | BAH review design doc (task 3.4.1) |  | 10d | 2007-03-28 | 2007-04-10 | 102 | 5d |  |

| ID | WBS | Task | Type | Duration | Start | Finish | Predecessors | Total slack | Free slack |
| --- | --- | --- | --- | --- | --- | --- | --- | --- | --- |
| 104 | 1.5 | **Implementation (task 3.5.1)** |  | 30d | 2007-03-07 | 2007-04-17 | 63 | 0d |  |
| 105 | 1.5.1 | Database |  | 20d | 2007-03-07 | 2007-04-03 |  | 0d |  |
| 106 | 1.5.2 | Deployment |  | 20d | 2007-03-07 | 2007-04-03 |  | 10d |  |
| 107 | 1.5.3 | Business layer |  | 20d | 2007-03-07 | 2007-04-03 |  | 0d |  |
| 108 | 1.5.4 | ESB |  | 20d | 2007-03-07 | 2007-04-03 |  | 0d |  |
| 109 | 1.5.5 | Web interface |  | 20d | 2007-03-07 | 2007-04-03 |  | 0d |  |
| 110 | 1.5.6 | Deliver codebase to BAH (task 3.5.1) | milestone | 0d | 2007-04-03 | 2007-04-03 | 105, 107, 108, 109 | 0d |  |
| 111 | 1.5.7 | BAH review codebase (task 3.5.1) |  | 10d | 2007-04-04 | 2007-04-17 | 110 | 0d |  |
| 112 | 1.6 | **Testing** |  | 30d | 2007-03-01 | 2007-04-11 | 2 | 4d |  |
| 113 | 1.6.1 | **Developer testing** |  | 30d | 2007-03-01 | 2007-04-11 |  | 4d |  |
| 114 | 1.6.1.1 | **Update developer test plan (task 3.6.1, task 5.4.1)** |  | 30d | 2007-03-01 | 2007-04-11 |  | 4d |  |
| 115 | 1.6.1.1.1 | Developer draft |  | 5d | 2007-03-01 | 2007-03-07 |  | 4d | 0d |
| 116 | 1.6.1.1.2 | Adopter review |  | 5d | 2007-03-08 | 2007-03-14 | 115 | 4d | 0d |
| 117 | 1.6.1.1.3 | Developer update |  | 5d | 2007-03-15 | 2007-03-21 | 116 | 4d | 0d |
| 118 | 1.6.1.1.4 | Adopter review and sign |  | 5d | 2007-03-22 | 2007-03-28 | 117 | 4d | 0d |
| 119 | 1.6.1.1.5 | Deliver signed test plan to BAH (task 3.6.1, task 5.4.1) | milestone | 0d | 2007-03-28 | 2007-03-28 | 118 | 4d | 0d |
| 120 | 1.6.1.1.6 | BAH review signed test plan (task 3.6.1, task 5.4.1) |  | 10d | 2007-03-29 | 2007-04-11 | 119 | 4d |  |
| 121 | 1.6.1.2 | **Integration and system testing (task 3.8.1)** |  | 10d | 2007-03-28 | 2007-04-10 | 110FS-5d, 115 | 5d |  |
| 122 | 1.6.1.2.1 | Generate test data |  | 1d | 2007-03-28 | 2007-03-28 |  | 14d |  |
| 123 | 1.6.1.2.2 | Write tests |  | 3d | 2007-03-28 | 2007-03-30 |  | 10d | 0d |
| 124 | 1.6.1.2.3 | Validate tests |  | 1d | 2007-04-02 | 2007-04-02 | 123 | 10d | 0d |
| 125 | 1.6.1.2.4 | Generate test report |  | 1d | 2007-04-03 | 2007-04-03 | 124 | 10d |  |
| 126 | 1.6.1.2.5 | Deliver test report to BAH (task 3.8.1) | milestone | 0d | 2007-03-28 | 2007-03-28 |  | 15d |  |
| 127 | 1.6.1.2.6 | BAH review test report (task 3.8.1) |  | 10d | 2007-03-28 | 2007-04-10 |  | 5d |  |

| ID | WBS | Task | Type | Duration | Start | Finish | Predecessors | Total slack | Free slack |
| --- | --- | --- | --- | --- | --- | --- | --- | --- | --- |
| 128 | 1.6.2 | **Adopter testing** |  | 30d | 2007-03-01 | 2007-04-11 |  | 4d |  |
| 129 | 1.6.2.1 | **Update adopter test plan (task 5.5.1)** |  | 30d | 2007-03-01 | 2007-04-11 |  | 4d |  |
| 130 | 1.6.2.1.1 | Adopter update test script |  | 5d | 2007-03-01 | 2007-03-07 |  | 4d | 0d |
| 131 | 1.6.2.1.2 | Adopter update test approach |  | 5d | 2007-03-08 | 2007-03-14 | 130 | 4d | 0d |
| 132 | 1.6.2.1.3 | Developer review |  | 5d | 2007-03-15 | 2007-03-21 | 131 | 4d | 0d |
| 133 | 1.6.2.1.4 | Adopter update |  | 5d | 2007-03-22 | 2007-03-28 | 132 | 4d | 0d |
| 134 | 1.6.2.1.5 | Developer deliver adopter test plan to BAH (task 5.5.1) | milestone | 0d | 2007-03-28 | 2007-03-28 | 133 | 4d | 0d |
| 135 | 1.6.2.1.6 | BAH review adopter test plan (task 5.5.1) |  | 10d | 2007-03-29 | 2007-04-11 | 134 | 4d |  |
| 136 | 1.6.2.2 | **QA testing (task 5.6.1)** |  | 22d | 2007-03-08 | 2007-04-06 | 130 | 7d |  |
| 137 | 1.6.2.2.1 | Adopter create test data |  | 5d | 2007-03-08 | 2007-03-14 |  | 7d | 0d |
| 138 | 1.6.2.2.2 | Adopter perform test script |  | 5d | 2007-03-15 | 2007-03-21 | 137 | 7d | 0d |
| 139 | 1.6.2.2.3 | Adopter document results |  | 2d | 2007-03-22 | 2007-03-23 | 138 | 7d | 0d |
| 140 | 1.6.2.2.4 | Adopter log bugs |  | 2d | 2007-03-26 | 2007-03-27 | 139 | 15d |  |
| 141 | 1.6.2.2.5 | Developer deliver adopter test report to BAH (task 5.6.1) | milestone | 0d | 2007-03-23 | 2007-03-23 | 139 | 7d | 0d |
| 142 | 1.6.2.2.6 | BAH review adopter test report (task 5.6.1) |  | 10d | 2007-03-26 | 2007-04-06 | 141 | 7d |  |
| 143 | 1.7 | **Documentation** |  | 15d | 2007-03-28 | 2007-04-17 |  | 0d |  |
| 144 | 1.7.1 | **Installation guide (task 3.10.1)** |  | 13d | 2007-03-30 | 2007-04-17 | 110FS-3d | 0d |  |
| 145 | 1.7.1.1 | Update installation guide |  | 3d | 2007-03-30 | 2007-04-03 |  | 0d |  |
| 146 | 1.7.1.2 | Deliver installation guide to BAH (task 3.10.1) | milestone | 0d | 2007-04-03 | 2007-04-03 | 145 | 0d |  |
| 147 | 1.7.1.3 | BAH review of installation guide (task 3.10.1) |  | 10d | 2007-04-04 | 2007-04-17 | 146 | 0d |  |
| 148 | 1.7.2 | **Administration guide (task 3.13.1)** |  | 13d | 2007-03-30 | 2007-04-17 | 110FS-3d | 0d |  |
| 149 | 1.7.2.1 | Update administration guide |  | 3d | 2007-03-30 | 2007-04-03 |  | 0d |  |
| 150 | 1.7.2.2 | Deliver administration guide to BAH (task 3.13.1) | milestone | 0d | 2007-04-03 | 2007-04-03 | 149 | 0d |  |
| 151 | 1.7.2.3 | BAH review of administration guide (task 3.13.1) |  | 10d | 2007-04-04 | 2007-04-17 | 150 | 0d |  |

| ID | WBS | Task | Type | Duration | Start | Finish | Predecessors | Total slack | Free slack | Constraint |
| --- | --- | --- | --- | --- | --- | --- | --- | --- | --- | --- |
| 152 | 1.7.3 | **Release notes (task 3.14.1)** |  | 13d | 2007-03-30 | 2007-04-17 | 110FS-3d | 0d |  |  |
| 153 | 1.7.3.1 | Update release notes |  | 3d | 2007-03-30 | 2007-04-03 |  | 0d |  |  |
| 154 | 1.7.3.2 | Deliver release notes to BAH (task 3.14.1) | milestone | 0d | 2007-04-03 | 2007-04-03 | 153 | 0d |  |  |
| 155 | 1.7.3.3 | BAH review of release notes (task 3.14.1) |  | 10d | 2007-04-04 | 2007-04-17 | 154 | 0d |  |  |
| 156 | 1.7.4 | **Adopter summary of C3PR (task 5.1.1)** |  | 15d | 2007-03-28 | 2007-04-17 | 110FS-5d | 0d |  |  |
| 157 | 1.7.4.1 | Adopter update summary |  | 3d | 2007-03-28 | 2007-03-30 |  | 0d |  |  |
| 158 | 1.7.4.2 | Developer review summary |  | 1d | 2007-04-02 | 2007-04-02 | 157 | 0d |  |  |
| 159 | 1.7.4.3 | Adopter update summary |  | 1d | 2007-04-03 | 2007-04-03 | 158 | 0d |  |  |
| 160 | 1.7.4.4 | Developer deliver C3PR summary to BAH (task 5.1.1) | milestone | 0d | 2007-04-03 | 2007-04-03 | 159 | 0d |  |  |
| 161 | 1.7.4.5 | BAH review of C3PR summary (task 5.1.1) |  | 10d | 2007-04-04 | 2007-04-17 | 160 | 0d |  |  |
| 162 | 2 | **Iteration 1 (eligibility, study personnel, multi-site study)** |  | 32d | 2007-03-01 | 2007-04-13 |  | 2d |  |  |
| 163 | 2.1 | Iteration start | milestone | 0d | 2007-03-01 | 2007-03-01 |  | 2d | 0d | start no earlier than 2007-03-01 |
| 164 | 2.2 | **Project Management** |  | 30d | 2007-03-01 | 2007-04-11 | 163 | 4d |  |  |
| 165 | 2.2.1 | **Draft project plan (task 1.1)** |  | 30d | 2007-03-01 | 2007-04-11 |  | 4d |  |  |
| 166 | 2.2.1.1 | Developer draft |  | 5d | 2007-03-01 | 2007-03-07 |  | 4d | 0d |  |
| 167 | 2.2.1.2 | BAH review |  | 5d | 2007-03-08 | 2007-03-14 | 166 | 4d | 0d |  |
| 168 | 2.2.1.3 | Developer update |  | 5d | 2007-03-15 | 2007-03-21 | 167 | 4d | 0d |  |
| 169 | 2.2.1.4 | Adopter review |  | 3d | 2007-03-22 | 2007-03-26 | 168 | 4d | 0d |  |
| 170 | 2.2.1.5 | Developer update |  | 2d | 2007-03-27 | 2007-03-28 | 169 | 4d | 0d |  |
| 171 | 2.2.1.6 | Deliver project plan to BAH (task 1.1) | milestone | 0d | 2007-03-28 | 2007-03-28 | 170 | 4d | 0d |  |
| 172 | 2.2.1.7 | BAH review project plan (task 1.1) |  | 10d | 2007-03-29 | 2007-04-11 | 171 | 4d |  |  |
| 173 | 2.2.2 | **Update risk matrix (task 1.3.1)** |  | 20d | 2007-03-01 | 2007-03-28 |  | 4d |  |  |
| 174 | 2.2.2.1 | Update risk matrix for week 1 |  | 5d | 2007-03-01 | 2007-03-07 |  | 4d | 0d |  |
| 175 | 2.2.2.2 | Update risk matrix for week 2 |  | 5d | 2007-03-08 | 2007-03-14 | 174 | 4d | 0d |  |
| 176 | 2.2.2.3 | Deliver risk matrix to BAH (task 1.3.1) | milestone | 0d | 2007-03-14 | 2007-03-14 | 175 | 4d | 0d |  |
| 177 | 2.2.2.4 | BAH review risk matrix (task 1.3.1) |  | 10d | 2007-03-15 | 2007-03-28 | 176 | 14d |  |  |

| ID | WBS | Task | Type | Duration | Start | Finish | Predecessors | Total slack | Free slack |
| --- | --- | --- | --- | --- | --- | --- | --- | --- | --- |
| 178 | 2.2.3 | **Monthly report (task 1.3.1)** |  | 20d | 2007-03-15 | 2007-04-11 | 176 | 4d |  |
| 179 | 2.2.3.1 | Update risk matrix for week 3 |  | 5d | 2007-03-15 | 2007-03-21 |  | 4d | 0d |
| 180 | 2.2.3.2 | Update risk matrix for week 4 |  | 5d | 2007-03-22 | 2007-03-28 | 179 | 4d | 0d |
| 181 | 2.2.3.3 | Deliver monthly report and risk matrix to BAH (task 1.3.1) | milestone | 0d | 2007-03-28 | 2007-03-28 | 180 | 4d | 0d |
| 182 | 2.2.3.4 | BAH review monthly report and risk matrix (task 1.3.1) |  | 10d | 2007-03-29 | 2007-04-11 | 181 | 4d |  |
| 183 | 2.3 | **Requirements and use cases** |  | 30d | 2007-03-01 | 2007-04-11 | 163 | 2d |  |
| 184 | 2.3.1 | **Create level 1 use cases and requirements** |  | 2d | 2007-03-01 | 2007-03-02 |  | 2d | 0d |
| 185 | 2.3.1.1 | Use case document (task 3.1.1) |  | 1d | 2007-03-01 | 2007-03-01 |  | 2d | 0d |
| 186 | 2.3.1.2 | Requirements document (3.2.1) |  | 1d | 2007-03-02 | 2007-03-02 | 185 | 2d |  |
| 187 | 2.3.2 | **Update use case document (task 3.1.1, task 5.2.1)** |  | 9d | 2007-03-05 | 2007-03-15 | 184 | 4d | 0d |
| 188 | 2.3.2.1 | **Update eligibility use cases** |  | 9d | 2007-03-05 | 2007-03-15 |  | 4d |  |
| 189 | 2.3.2.1.1 | Developer update |  | 2d | 2007-03-05 | 2007-03-06 |  | 4d | 0d |
| 190 | 2.3.2.1.2 | Adopter review |  | 5d | 2007-03-07 | 2007-03-13 | 189 | 4d | 0d |
| 191 | 2.3.2.1.3 | Developer update |  | 1d | 2007-03-14 | 2007-03-14 | 190 | 4d | 0d |
| 192 | 2.3.2.1.4 | Adopter sign-off |  | 1d | 2007-03-15 | 2007-03-15 | 191 | 4d |  |
| 193 | 2.3.2.2 | **Update study personel use cases** |  | 9d | 2007-03-05 | 2007-03-15 |  | 4d |  |
| 194 | 2.3.2.2.1 | Developer update |  | 2d | 2007-03-05 | 2007-03-06 |  | 4d | 0d |
| 195 | 2.3.2.2.2 | Adopter review |  | 5d | 2007-03-07 | 2007-03-13 | 194 | 4d | 0d |
| 196 | 2.3.2.2.3 | Developer update |  | 1d | 2007-03-14 | 2007-03-14 | 195 | 4d | 0d |
| 197 | 2.3.2.2.4 | Adopter sign-off |  | 1d | 2007-03-15 | 2007-03-15 | 196 | 4d |  |
| 198 | 2.3.2.3 | **Update multi-site trial use cases** |  | 9d | 2007-03-05 | 2007-03-15 |  | 4d |  |
| 199 | 2.3.2.3.1 | Developer update |  | 2d | 2007-03-05 | 2007-03-06 |  | 4d | 0d |
| 200 | 2.3.2.3.2 | Adopter review |  | 5d | 2007-03-07 | 2007-03-13 | 199 | 4d | 0d |
| 201 | 2.3.2.3.3 | Developer update |  | 1d | 2007-03-14 | 2007-03-14 | 200 | 4d | 0d |
| 202 | 2.3.2.3.4 | Adopter sign-off |  | 1d | 2007-03-15 | 2007-03-15 | 201 | 4d |  |

| ID | WBS | Task | Type | Duration | Start | Finish | Predecessors | Total slack | Free slack |
| --- | --- | --- | --- | --- | --- | --- | --- | --- | --- |
| 203 | 2.3.3 | **Update requirements document (task 3.2.1, task 5.3.1)** |  | 9d | 2007-03-16 | 2007-03-28 | 187 | 4d | 0d |
| 204 | 2.3.3.1 | **Update eligibility requirements** |  | 9d | 2007-03-16 | 2007-03-28 |  | 4d |  |
| 205 | 2.3.3.1.1 | Developer update |  | 2d | 2007-03-16 | 2007-03-19 |  | 4d | 0d |
| 206 | 2.3.3.1.2 | Adopter review |  | 5d | 2007-03-20 | 2007-03-26 | 205 | 4d | 0d |
| 207 | 2.3.3.1.3 | Developer update |  | 1d | 2007-03-27 | 2007-03-27 | 206 | 4d | 0d |
| 208 | 2.3.3.1.4 | Adopter sign-off |  | 1d | 2007-03-28 | 2007-03-28 | 207 | 4d |  |
| 209 | 2.3.3.2 | **Update study personel requirements** |  | 9d | 2007-03-16 | 2007-03-28 |  | 4d |  |
| 210 | 2.3.3.2.1 | Developer update |  | 2d | 2007-03-16 | 2007-03-19 |  | 4d | 0d |
| 211 | 2.3.3.2.2 | Adopter review |  | 5d | 2007-03-20 | 2007-03-26 | 210 | 4d | 0d |
| 212 | 2.3.3.2.3 | Developer update |  | 1d | 2007-03-27 | 2007-03-27 | 211 | 4d | 0d |
| 213 | 2.3.3.2.4 | Adopter sign-off |  | 1d | 2007-03-28 | 2007-03-28 | 212 | 4d |  |
| 214 | 2.3.3.3 | **Update multi-site trial requirements** |  | 9d | 2007-03-16 | 2007-03-28 |  | 4d |  |
| 215 | 2.3.3.3.1 | Developer update |  | 2d | 2007-03-16 | 2007-03-19 |  | 4d | 0d |
| 216 | 2.3.3.3.2 | Adopter review |  | 5d | 2007-03-20 | 2007-03-26 | 215 | 4d | 0d |
| 217 | 2.3.3.3.3 | Developer update |  | 1d | 2007-03-27 | 2007-03-27 | 216 | 4d | 0d |
| 218 | 2.3.3.3.4 | Adopter sign-off |  | 1d | 2007-03-28 | 2007-03-28 | 217 | 4d |  |
| 219 | 2.3.4 | Developer deliver use case document to BAH (task 3.1.1, task 5.2.1) | milestone | 0d | 2007-03-28 | 2007-03-28 | 203 | 4d | 0d |
| 220 | 2.3.5 | BAH review use case document (task 3.1.1, task 5.2.1) |  | 10d | 2007-03-29 | 2007-04-11 | 219 | 4d |  |
| 221 | 2.3.6 | Developer deliver requirements document to BAH (task 3.2.1, task 5.3.1) | milestone | 0d | 2007-03-28 | 2007-03-28 | 203 | 4d | 0d |
| 222 | 2.3.7 | BAH review requirements document (task 3.2.1, task 5.3.1) |  | 10d | 2007-03-29 | 2007-04-11 | 221 | 4d |  |
| 223 | 2.4 | **Analysis and Design** |  | 29d | 2007-03-05 | 2007-04-12 | 184 | 2d |  |
| 224 | 2.4.1 | **Perform level 1 design** |  | 2d | 2007-03-05 | 2007-03-06 |  | 2d | 0d |
| 225 | 2.4.1.1 | Cursory BRIDG harmonization |  | 1d | 2007-03-05 | 2007-03-05 |  | 2d | 0d |
| 226 | 2.4.1.2 | Update implementation model |  | 1d | 2007-03-06 | 2007-03-06 | 225 | 2d |  |
| 227 | 2.4.1.3 | Cursory system design |  | 2d | 2007-03-05 | 2007-03-06 |  | 2d |  |

| ID | WBS | Task | Type | Duration | Start | Finish | Predecessors | Total slack | Free slack |
| --- | --- | --- | --- | --- | --- | --- | --- | --- | --- |
| 228 | 2.4.2 | **Modeling (task 3.3.1)** |  | 27d | 2007-03-07 | 2007-04-12 | 224 | 3d |  |
| 229 | 2.4.2.1 | **Update model** |  | 6d | 2007-03-07 | 2007-03-14 |  | 3d | 0d |
| 230 | 2.4.2.1.1 | **BRIDG harmonization** |  | 3d | 2007-03-07 | 2007-03-09 | 224 | 3d | 0d |
| 231 | 2.4.2.1.1.1 | Harmonize Study model |  | 3d | 2007-03-07 | 2007-03-09 |  | 3d |  |
| 232 | 2.4.2.1.1.2 | Harmonize Personnel model |  | 3d | 2007-03-07 | 2007-03-09 |  | 3d |  |
| 233 | 2.4.2.1.1.3 | Harmonize Multi-site Study model |  | 3d | 2007-03-07 | 2007-03-09 |  | 3d |  |
| 234 | 2.4.2.1.2 | **Model implementation** |  | 3d | 2007-03-12 | 2007-03-14 | 230 | 3d |  |
| 235 | 2.4.2.1.2.1 | Implement Study model |  | 3d | 2007-03-12 | 2007-03-14 |  | 3d |  |
| 236 | 2.4.2.1.2.2 | Implement Personnel model |  | 3d | 2007-03-12 | 2007-03-14 |  | 3d |  |
| 237 | 2.4.2.1.2.3 | Implement Multi-site Study model |  | 3d | 2007-03-12 | 2007-03-14 |  | 3d |  |
| 238 | 2.4.2.2 | Adopter review |  | 5d | 2007-03-15 | 2007-03-21 | 229 | 3d | 0d |
| 239 | 2.4.2.3 | **Update model** |  | 6d | 2007-03-22 | 2007-03-29 | 238 | 3d | 0d |
| 240 | 2.4.2.3.1 | **BRIDG harmonization** |  | 3d | 2007-03-22 | 2007-03-26 | 238 | 3d | 0d |
| 241 | 2.4.2.3.1.1 | Harmonize Study model |  | 3d | 2007-03-22 | 2007-03-26 |  | 3d |  |
| 242 | 2.4.2.3.1.2 | Harmonize Personnel model |  | 3d | 2007-03-22 | 2007-03-26 |  | 3d |  |
| 243 | 2.4.2.3.1.3 | Harmonize Multi-site Study model |  | 3d | 2007-03-22 | 2007-03-26 |  | 3d |  |
| 244 | 2.4.2.3.2 | **Model implementation** |  | 3d | 2007-03-27 | 2007-03-29 | 240 | 3d |  |
| 245 | 2.4.2.3.2.1 | Implement Study model |  | 3d | 2007-03-27 | 2007-03-29 |  | 3d |  |
| 246 | 2.4.2.3.2.2 | Implement Personnel model |  | 3d | 2007-03-27 | 2007-03-29 |  | 3d |  |
| 247 | 2.4.2.3.2.3 | Implement Multi-site Study model |  | 3d | 2007-03-27 | 2007-03-29 |  | 3d |  |
| 248 | 2.4.2.4 | Developer deliver UML to BAH (task 3.3.1) | milestone | 0d | 2007-03-29 | 2007-03-29 | 239 | 3d | 0d |
| 249 | 2.4.2.5 | BAH review of UML (task 3.3.1) |  | 10d | 2007-03-30 | 2007-04-12 | 248 | 3d |  |
| 250 | 2.4.3 | **System design (task 3.4.1)** |  | 25d | 2007-03-07 | 2007-04-10 | 224 | 5d |  |
| 251 | 2.4.3.1 | **Design eligibility** |  | 15d | 2007-03-07 | 2007-03-27 |  | 5d | 0d |
| 252 | 2.4.3.1.1 | Draft UML |  | 5d | 2007-03-07 | 2007-03-13 |  | 5d | 0d |
| 253 | 2.4.3.1.2 | Team review |  | 5d | 2007-03-14 | 2007-03-20 | 252 | 5d | 0d |
| 254 | 2.4.3.1.3 | Update design document |  | 5d | 2007-03-21 | 2007-03-27 | 253 | 5d |  |

| ID | WBS | Task | Type | Duration | Start | Finish | Predecessors | Total slack | Free slack |
| --- | --- | --- | --- | --- | --- | --- | --- | --- | --- |
| 255 | 2.4.3.2 | **Design personnel** |  | 15d | 2007-03-07 | 2007-03-27 |  | 5d | 0d |
| 256 | 2.4.3.2.1 | Draft UML |  | 5d | 2007-03-07 | 2007-03-13 |  | 5d | 0d |
| 257 | 2.4.3.2.2 | Team review |  | 5d | 2007-03-14 | 2007-03-20 | 256 | 5d | 0d |
| 258 | 2.4.3.2.3 | Update design document |  | 5d | 2007-03-21 | 2007-03-27 | 257 | 5d |  |
| 259 | 2.4.3.3 | **Design multi-site study** |  | 15d | 2007-03-07 | 2007-03-27 |  | 5d | 0d |
| 260 | 2.4.3.3.1 | Draft UML |  | 5d | 2007-03-07 | 2007-03-13 |  | 5d | 0d |
| 261 | 2.4.3.3.2 | Team review |  | 5d | 2007-03-14 | 2007-03-20 | 260 | 5d | 0d |
| 262 | 2.4.3.3.3 | Update design document |  | 5d | 2007-03-21 | 2007-03-27 | 261 | 5d |  |
| 263 | 2.4.3.4 | Deliver design doc to BAH (task 3.4.1) | milestone | 0d | 2007-03-27 | 2007-03-27 | 251, 255, 259 | 5d | 0d |
| 264 | 2.4.3.5 | BAH review design doc (task 3.4.1) |  | 10d | 2007-03-28 | 2007-04-10 | 263 | 5d |  |
| 265 | 2.5 | **Implementation (task 3.5.1)** |  | 28d | 2007-03-07 | 2007-04-13 | 224 | 2d |  |
| 266 | 2.5.1 | **Database** |  | 5d | 2007-03-07 | 2007-03-13 |  | 2d |  |
| 267 | 2.5.1.1 | **Eligibility model** |  | 3d | 2007-03-07 | 2007-03-09 |  | 2d | 0d |
| 268 | 2.5.1.1.1 | Create DDLs |  | 1d | 2007-03-07 | 2007-03-07 |  | 2d | 0d |
| 269 | 2.5.1.1.2 | Apply to database |  | 1d | 2007-03-08 | 2007-03-08 | 268 | 2d | 0d |
| 270 | 2.5.1.1.3 | Create test data |  | 1d | 2007-03-09 | 2007-03-09 | 269 | 2d |  |
| 271 | 2.5.1.2 | **Study personnel** |  | 5d | 2007-03-07 | 2007-03-13 |  | 13d |  |
| 272 | 2.5.1.2.1 | Investigate how to implement Person with Role |  | 2d | 2007-03-07 | 2007-03-08 |  | 13d | 0d |
| 273 | 2.5.1.2.2 | Create DDLs |  | 1d | 2007-03-09 | 2007-03-09 | 272 | 13d | 0d |
| 274 | 2.5.1.2.3 | Apply to database |  | 1d | 2007-03-12 | 2007-03-12 | 273 | 13d | 0d |
| 275 | 2.5.1.2.4 | Create test data |  | 1d | 2007-03-13 | 2007-03-13 | 274 | 13d |  |
| 276 | 2.5.1.3 | **Multi-site** |  | 3d | 2007-03-07 | 2007-03-09 |  | 4d | 0d |
| 277 | 2.5.1.3.1 | Create DDLs |  | 1d | 2007-03-07 | 2007-03-07 |  | 4d | 0d |
| 278 | 2.5.1.3.2 | Apply to database |  | 1d | 2007-03-08 | 2007-03-08 | 277 | 4d | 0d |
| 279 | 2.5.1.3.3 | Create test data |  | 1d | 2007-03-09 | 2007-03-09 | 278 | 4d |  |

| ID | WBS | Task | Type | Duration | Start | Finish | Predecessors | Total slack | Free slack |
| --- | --- | --- | --- | --- | --- | --- | --- | --- | --- |
| 280 | 2.5.2 | **Deployment** |  | 2d | 2007-03-12 | 2007-03-13 |  | 4d |  |
| 281 | 2.5.2.1 | Deploy a second C3PR for multi-site testing |  | 2d | 2007-03-12 | 2007-03-13 | 276 | 4d | 0d |
| 282 | 2.5.3 | **Business layer** |  | 6d | 2007-03-14 | 2007-03-21 |  | 4d |  |
| 283 | 2.5.3.1 | **Implement C3PR registration APIs** |  | 6d | 2007-03-14 | 2007-03-21 | 281 | 4d | 0d |
| 284 | 2.5.3.1.1 | Design APIs |  | 2d | 2007-03-14 | 2007-03-15 |  | 4d | 0d |
| 285 | 2.5.3.1.2 | Implement APIs |  | 3d | 2007-03-16 | 2007-03-20 | 284 | 4d | 0d |
| 286 | 2.5.3.1.3 | Deploy APIs |  | 1d | 2007-03-21 | 2007-03-21 | 285 | 4d |  |
| 287 | 2.5.4 | **ESB** |  | 5d | 2007-03-22 | 2007-03-28 |  | 4d | 2d |
| 288 | 2.5.4.1 | Implement inbound-binding component for C3PR registration |  | 5d | 2007-03-22 | 2007-03-28 | 283 | 4d |  |
| 289 | 2.5.5 | **Web interface** |  | 5d | 2007-03-07 | 2007-03-13 |  | 15d | 13d |
| 290 | 2.5.5.1 | **Modify study management interface** |  | 5d | 2007-03-07 | 2007-03-13 |  | 15d |  |
| 291 | 2.5.5.1.1 | Manage eligibility criteria |  | 5d | 2007-03-07 | 2007-03-13 |  | 15d |  |
| 292 | 2.5.5.1.2 | Manage multi-site study |  | 5d | 2007-03-07 | 2007-03-13 |  | 15d |  |
| 293 | 2.5.5.2 | **Modify study personnel management interface** |  | 5d | 2007-03-07 | 2007-03-13 |  | 15d |  |
| 294 | 2.5.5.2.1 | Manage study personnel |  | 5d | 2007-03-07 | 2007-03-13 |  | 15d |  |
| 295 | 2.5.5.3 | **Modify registration interface** |  | 5d | 2007-03-07 | 2007-03-13 |  | 15d |  |
| 296 | 2.5.5.3.1 | Check eligibility |  | 5d | 2007-03-07 | 2007-03-13 |  | 15d |  |
| 297 | 2.5.6 | Deliver codebase to BAH (task 3.5.1) | milestone | 0d | 2007-03-30 | 2007-03-30 | 266, 282, 287, 289, 351 | 2d | 0d |
| 298 | 2.5.7 | BAH review codebase (task 3.5.1) |  | 10d | 2007-04-02 | 2007-04-13 | 297 | 2d |  |
| 299 | 2.6 | **Testing** |  | 30d | 2007-03-01 | 2007-04-11 | 163 | 4d |  |
| 300 | 2.6.1 | **Developer testing** |  | 30d | 2007-03-01 | 2007-04-11 |  | 4d |  |
| 301 | 2.6.1.1 | **Update developer test plan (task 3.6.1, task 5.4.1)** |  | 30d | 2007-03-01 | 2007-04-11 |  | 4d |  |
| 302 | 2.6.1.1.1 | Developer draft |  | 5d | 2007-03-01 | 2007-03-07 |  | 4d | 0d |
| 303 | 2.6.1.1.2 | Adopter review |  | 5d | 2007-03-08 | 2007-03-14 | 302 | 4d | 0d |
| 304 | 2.6.1.1.3 | Developer update |  | 5d | 2007-03-15 | 2007-03-21 | 303 | 4d | 0d |
| 305 | 2.6.1.1.4 | Adopter review and sign |  | 5d | 2007-03-22 | 2007-03-28 | 304 | 4d | 0d |
| 306 | 2.6.1.1.5 | Deliver signed test plan to BAH (task 3.6.1, task 5.4.1) | milestone | 0d | 2007-03-28 | 2007-03-28 | 305 | 4d | 0d |
| 307 | 2.6.1.1.6 | BAH review signed test plan (task 3.6.1, task 5.4.1) |  | 10d | 2007-03-29 | 2007-04-11 | 306 | 4d |  |

| ID | WBS | Task | Type | Duration | Start | Finish | Predecessors | Total slack | Free slack |
| --- | --- | --- | --- | --- | --- | --- | --- | --- | --- |
| 308 | 2.6.1.2 | **Integration and system testing (task 3.8.1)** |  | 10d | 2007-03-26 | 2007-04-06 | 302, 297FS-5d | 7d |  |
| 309 | 2.6.1.2.1 | Generate test data |  | 1d | 2007-03-26 | 2007-03-26 |  | 16d |  |
| 310 | 2.6.1.2.2 | Write tests |  | 3d | 2007-03-26 | 2007-03-28 |  | 12d | 0d |
| 311 | 2.6.1.2.3 | Validate tests |  | 1d | 2007-03-29 | 2007-03-29 | 310 | 12d | 0d |
| 312 | 2.6.1.2.4 | Generate test report |  | 1d | 2007-03-30 | 2007-03-30 | 311 | 12d |  |
| 313 | 2.6.1.2.5 | Deliver test report to BAH (task 3.8.1) | milestone | 0d | 2007-03-26 | 2007-03-26 |  | 17d |  |
| 314 | 2.6.1.2.6 | BAH review test report (task 3.8.1) |  | 10d | 2007-03-26 | 2007-04-06 |  | 7d |  |
| 315 | 2.6.2 | **Adopter testing** |  | 30d | 2007-03-01 | 2007-04-11 |  | 4d |  |
| 316 | 2.6.2.1 | **Update adopter test plan (task 5.5.1)** |  | 30d | 2007-03-01 | 2007-04-11 |  | 4d |  |
| 317 | 2.6.2.1.1 | Adopter update test script |  | 5d | 2007-03-01 | 2007-03-07 |  | 4d | 0d |
| 318 | 2.6.2.1.2 | Adopter update test approach |  | 5d | 2007-03-08 | 2007-03-14 | 317 | 4d | 0d |
| 319 | 2.6.2.1.3 | Developer review |  | 5d | 2007-03-15 | 2007-03-21 | 318 | 4d | 0d |
| 320 | 2.6.2.1.4 | Adopter update |  | 5d | 2007-03-22 | 2007-03-28 | 319 | 4d | 0d |
| 321 | 2.6.2.1.5 | Developer deliver adopter test plan to BAH (task 5.5.1) | milestone | 0d | 2007-03-28 | 2007-03-28 | 320 | 4d | 0d |
| 322 | 2.6.2.1.6 | BAH review adopter test plan (task 5.5.1) |  | 10d | 2007-03-29 | 2007-04-11 | 321 | 4d |  |
| 323 | 2.6.2.2 | **QA testing (task 5.6.1)** |  | 22d | 2007-03-08 | 2007-04-06 | 317 | 7d |  |
| 324 | 2.6.2.2.1 | Adopter create test data |  | 5d | 2007-03-08 | 2007-03-14 |  | 7d | 0d |
| 325 | 2.6.2.2.2 | Adopter perform test script |  | 5d | 2007-03-15 | 2007-03-21 | 324 | 7d | 0d |
| 326 | 2.6.2.2.3 | Adopter document results |  | 2d | 2007-03-22 | 2007-03-23 | 325 | 7d | 0d |
| 327 | 2.6.2.2.4 | Adopter log bugs |  | 2d | 2007-03-26 | 2007-03-27 | 326 | 15d |  |
| 328 | 2.6.2.2.5 | Developer deliver adopter test report to BAH (task 5.6.1) | milestone | 0d | 2007-03-23 | 2007-03-23 | 326 | 7d | 0d |
| 329 | 2.6.2.2.6 | BAH review adopter test report (task 5.6.1) |  | 10d | 2007-03-26 | 2007-04-06 | 328 | 7d |  |
| 330 | 2.7 | **Documentation** |  | 15d | 2007-03-26 | 2007-04-13 |  | 2d |  |
| 331 | 2.7.1 | **Installation guide (task 3.10.1)** |  | 13d | 2007-03-28 | 2007-04-13 | 297FS-3d | 2d |  |
| 332 | 2.7.1.1 | Update installation guide |  | 3d | 2007-03-28 | 2007-03-30 |  | 2d | 0d |
| 333 | 2.7.1.2 | Deliver installation guide to BAH (task 3.10.1) | milestone | 0d | 2007-03-30 | 2007-03-30 | 332 | 2d | 0d |
| 334 | 2.7.1.3 | BAH review of installation guide (task 3.10.1) |  | 10d | 2007-04-02 | 2007-04-13 | 333 | 2d |  |

| ID | WBS | Task | Type | Duration | Start | Finish | Predecessors | Total slack | Free slack |
| --- | --- | --- | --- | --- | --- | --- | --- | --- | --- |
| 335 | 2.7.2 | **Administration guide (task 3.13.1)** |  | 13d | 2007-03-28 | 2007-04-13 | 297FS-3d | 2d |  |
| 336 | 2.7.2.1 | Update administration guide |  | 3d | 2007-03-28 | 2007-03-30 |  | 2d | 0d |
| 337 | 2.7.2.2 | Deliver administration guide to BAH (task 3.13.1) | milestone | 0d | 2007-03-30 | 2007-03-30 | 336 | 2d | 0d |
| 338 | 2.7.2.3 | BAH review of administration guide (task 3.13.1) |  | 10d | 2007-04-02 | 2007-04-13 | 337 | 2d |  |
| 339 | 2.7.3 | **Release notes (task 3.14.1)** |  | 13d | 2007-03-28 | 2007-04-13 | 297FS-3d | 2d |  |
| 340 | 2.7.3.1 | Update release notes |  | 3d | 2007-03-28 | 2007-03-30 |  | 2d | 0d |
| 341 | 2.7.3.2 | Deliver release notes to BAH (task 3.14.1) | milestone | 0d | 2007-03-30 | 2007-03-30 | 340 | 2d | 0d |
| 342 | 2.7.3.3 | BAH review of release notes (task 3.14.1) |  | 10d | 2007-04-02 | 2007-04-13 | 341 | 2d |  |
| 343 | 2.7.4 | **Adopter summary of C3PR (task 5.1.1)** |  | 15d | 2007-03-26 | 2007-04-13 | 297FS-5d | 2d |  |
| 344 | 2.7.4.1 | Adopter update summary |  | 3d | 2007-03-26 | 2007-03-28 |  | 2d | 0d |
| 345 | 2.7.4.2 | Developer review summary |  | 1d | 2007-03-29 | 2007-03-29 | 344 | 2d | 0d |
| 346 | 2.7.4.3 | Adopter update summary |  | 1d | 2007-03-30 | 2007-03-30 | 345 | 2d | 0d |
| 347 | 2.7.4.4 | Developer deliver C3PR summary to BAH (task 5.1.1) | milestone | 0d | 2007-03-30 | 2007-03-30 | 346 | 2d | 0d |
| 348 | 2.7.4.5 | BAH review of C3PR summary (task 5.1.1) |  | 10d | 2007-04-02 | 2007-04-13 | 347 | 2d |  |
| 350 | 3 | **Iteration 2 (eligibility, study personnel, multi-site study)** |  | 108d? | 2006-11-01 | 2007-03-30 |  | 12d |  |
| 351 | 3.1 | **caDSR integration** |  | 10d | 2007-03-19 | 2007-03-30 | 356 | 2d | 0d |
| 352 | 3.1.1 | Review C3PR Release 1 code |  | 5d | 2007-03-19 | 2007-03-23 |  | 2d | 0d |
| 353 | 3.1.2 | Implement import eligibility criteria from caDSR |  | 5d | 2007-03-26 | 2007-03-30 | 352 | 2d |  |
| 354 | 3.2 | Security |  | 1d? | 2006-11-01 | 2006-11-01 |  | 119d |  |
| 355 | 3.3 | Business logic |  | 1d? | 2006-11-01 | 2006-11-01 |  | 119d |  |
| 356 | 3.4 | Implement import eligibility criteria from file |  | 5d | 2007-03-12 | 2007-03-16 | 267 | 2d | 0d |
